# 211229_HCR_Tiến độ chi tiết 60% ý tưởng_Detail schedule 60% concept (V2)

Schedule from MS Project, 2022-04-05 to 2022-06-06.

## Calendars

- Standard: Mon-Fri 08:00-12:00, 13:00-17:00; Sat-Sun off. Exceptions (off unless hours are given): 2022-04-11 (Gio to 10-3), 2022-05-02 to 2022-05-03 (30-4).

## Resources

| Resource |
| --- |
| CONINCO |
| CĐT |
| CNC |
| MEP |
| TVCQ |
| TVNT |
| LIGHTING |
| INTERIOR DESIGN |

## Schedule

| ID | WBS | Task | Duration | Start | Finish | Predecessors | Total slack | Free slack | Constraint | Resources | Work | Text2 |
| --- | --- | --- | --- | --- | --- | --- | --- | --- | --- | --- | --- | --- |
| 1 | 1 | **TIẾN ĐỘ CHI TIẾT ĐIỀU PHỐI DỰ ÁN ĐÔNG VĨNH GIAI ĐOẠN THIẾT KẾ CƠ SỞ: Biệt thự: 05 mẫu; Nhà liền kề kết hợp thương mại: 14 mẫu; Nhà liền kề: 26 mẫu** | 42d | 2022-04-05 | 2022-06-06 |  | 0d |  |  |  | 2536h |  |
| 2 | 1.1 | **KHỐI THẤP TẦNG** | 42d | 2022-04-05 | 2022-06-06 |  | 0d |  |  |  | 2144h |  |
| 3 | 1.1.1 | **I. TVTK KIẾN TRÚC - CONINCO** | 42d | 2022-04-05 | 2022-06-06 |  | 0d |  |  |  | 656h |  |
| 4 | 1.1.1.1 | Tổng mặt bằng (tỉ lệ 1:500) | 5d | 2022-04-05 | 2022-04-12 |  | 0d |  | start no earlier than 2022-04-05 | CONINCO | 40h |  |
| 5 | 1.1.1.2 | Mặt bằng các tầng (tỉ lệ 1:200 hoặc 1:100) | 7d | 2022-04-05 | 2022-04-14 | 4SS | 0d |  | start no earlier than 2021-12-15 | CONINCO | 56h |  |
| 6 | 1.1.1.3 | Mặt đứng tỉ lệ (1:200 hoặc 1:100) | 6d | 2022-04-07 | 2022-04-15 | 4FS-3d | 9d | 0d |  | CONINCO | 48h |  |
| 7 | 1.1.1.4 | Mặt cắt (tỉ lệ 1:200 hoặc 1:100) | 3d | 2022-04-18 | 2022-04-20 | 6 | 9d | 0d |  | CONINCO | 24h |  |
| 8 | 1.1.1.5 | Chi tiết các thang bộ, vệ sinh, chi tiết các phòng điển hình | 5d | 2022-04-15 | 2022-04-21 | 5 | 0d |  |  | CONINCO | 40h |  |
| 9 | 1.1.1.6 | Tích hợp thiết kế của các nhà tư vấn khác (MEP, Kết cấu) vào thiết kế kiến trúc | 8d | 2022-05-11 | 2022-05-20 | 20 | 11d |  |  | CONINCO | 64h |  |
| 10 | 1.1.1.7 | Vật liệu hoàn thiện nội & ngoại thất sơ bộ | 4d | 2022-04-21 | 2022-04-26 | 7 | 27d |  |  | CONINCO | 32h |  |
| 11 | 1.1.1.8 | 02 phối cảnh tổng thể | 7d | 2022-04-21 | 2022-04-29 | 7 | 24d |  |  | CONINCO | 56h |  |
| 12 | 1.1.1.9 | 02 phối cảnh đường phố. | 7d | 2022-04-21 | 2022-04-29 | 7 | 24d |  |  | CONINCO | 56h |  |
| 13 | 1.1.1.10 | Bảng thống kê diện tích | 3d | 2022-04-22 | 2022-04-26 | 8 | 0d |  |  | CONINCO | 24h |  |
| 14 | 1.1.1.11 | Giao nộp CĐT lần 1 | 2d | 2022-04-27 | 2022-04-28 | 13 | 0d |  |  | CONINCO | 16h |  |
| 15 | 1.1.1.12 | Hoàn thiện Hồ sơ TKCS | 22d | 2022-04-29 | 2022-06-01 | 14 | 0d |  |  | CONINCO | 176h | Bao gồm thời gian đợi phản hồi từ CĐT |
| 16 | 1.1.1.13 | Thuyết minh thiết kế | 3d | 2022-06-02 | 2022-06-06 | 15 | 0d |  |  | CONINCO | 24h | Bao gồm thời gian đợi phản hồi từ CĐT |
| 17 | 1.1.2 | **II. TVTK KẾT CẤU - CONINCO** | 33d | 2022-04-05 | 2022-05-24 |  | 9d |  |  | CONINCO | 560h |  |
| 18 | 1.1.2.1 | Đề xuất giải pháp kết cấu theo các phương án: móng, cột, vách | 3d | 2022-04-05 | 2022-04-07 | 4SS | 39d |  |  | CONINCO | 24h |  |
| 19 | 1.1.2.2 | Kiểm tra lưới cột, ý kiến phương án cột, kết cấu đề xuất (dầm, sàn...). Kiểm tra tính khả thi của PA Kiến trúc | 12d | 2022-04-21 | 2022-05-10 | 7 | 19d |  |  | CONINCO | 96h |  |
| 20 | 1.1.2.3 | Đề xuất giải pháp cột, vách, đề xuất kích thước sơ bộ cột, dầm, sàn theo các phương án | 12d | 2022-04-21 | 2022-05-10 | 7 | 9d | 0d |  | CONINCO | 96h |  |
| 21 | 1.1.2.4 | Giao nộp CĐT lần 1 | 2d | 2022-05-11 | 2022-05-12 | 20 | 9d | 0d |  | CONINCO | 16h |  |
| 22 | 1.1.2.5 | Hoàn thiện Hồ sơ TKCS Kết cấu | 5d | 2022-05-13 | 2022-05-19 | 21 | 9d | 0d |  | CONINCO | 40h | Bao gồm thời gian đợi phản hồi từ CĐT |
| 23 | 1.1.2.6 | Thuyết minh thiết kế | 3d | 2022-05-20 | 2022-05-24 | 22 | 9d |  |  | CONINCO | 24h | Bao gồm thời gian đợi phản hồi từ CĐT |
| 24 | 1.1.3 | **III. TVTK MEP - CONINCO** | 33d | 2022-04-05 | 2022-05-24 |  | 9d |  |  |  | 416h |  |
| 25 | 1.1.3.1 | Đề xuất các giải pháp MEP theo các phương án: hạng mục điều hòa, thông gió; hạng mục cấp thoát nước; hạng mục điện trong, ngoài nhà; hạng mục âm thanh thông báo (nếu có); hạng mục camera an ninh (nếu có); hạng mục IT; hạng mục kiểm soát ra vào (nếu có) | 3d | 2022-04-05 | 2022-04-07 | 4SS | 39d |  |  | CONINCO | 24h |  |
| 26 | 1.1.3.2 | Đề xuất vị trí đặt các thiết bị MEP, trục, lỗ mở: AHU, PAU, Chiller… | 15d | 2022-04-07 | 2022-04-28 | 5SS+2d | 25d |  |  | CONINCO | 120h |  |
| 27 | 1.1.3.3 | Cung cấp kích thước hộp kỹ thuật ở tầng điển hình | 10d | 2022-04-20 | 2022-05-05 | 7SS+2d | 22d |  |  | CONINCO | 80h |  |
| 28 | 1.1.3.4 | Liệt kê các thiết bị đặt trên mái, không gian tầng kỹ thuật | 10d | 2022-04-20 | 2022-05-05 | 7SS+2d | 11d | 0d |  | CONINCO | 80h |  |
| 29 | 1.1.3.5 | Giao nộp CĐT lần 1 | 2d | 2022-05-06 | 2022-05-09 | 28 | 11d | 0d |  | CONINCO | 16h |  |
| 30 | 1.1.3.6 | Hoàn thiện Hồ sơ TKCS MEP | 9d | 2022-05-10 | 2022-05-20 | 29 | 11d |  |  | CONINCO | 72h | Bao gồm thời gian đợi phản hồi từ CĐT |
| 31 | 1.1.3.7 | Thuyết minh thiết kế | 3d | 2022-05-20 | 2022-05-24 | 22 | 9d |  |  | CONINCO | 24h | Bao gồm thời gian đợi phản hồi từ CĐT |

| ID | WBS | Task | Duration | Start | Finish | Predecessors | Total slack | Free slack | Constraint | Resources | Work | Text2 |
| --- | --- | --- | --- | --- | --- | --- | --- | --- | --- | --- | --- | --- |
| 32 | 1.1.4 | **IV. DỰ TOÁN - CONINCO** | 31d | 2022-04-05 | 2022-05-20 |  | 11d |  |  | CONINCO | 512h |  |
| 33 | 1.1.4.1 | Đề xuất cách tính Tổng mức đầu tư | 3d | 2022-04-05 | 2022-04-07 | 4SS | 39d |  |  | CONINCO | 24h |  |
| 34 | 1.1.4.2 | Tổng mức đầu tư | 7d | 2022-04-28 | 2022-05-10 | 4FS+11d | 11d | 0d |  | CONINCO | 56h |  |
| 35 | 1.1.4.3 | Giao nộp CĐT lần 1 | 3d | 2022-05-11 | 2022-05-13 | 34 | 11d | 0d |  | CONINCO | 24h |  |
| 36 | 1.1.4.4 | Phân tích đánh giá hiệu quả kinh doanh | 15d | 2022-04-28 | 2022-05-20 | 4FS+11d | 11d |  | finish no earlier than 2022-01-17 | CONINCO | 120h |  |
| 37 | 1.1.4.5 | Giao nộp lần 2 (Nếu có) | 5d | 2022-05-16 | 2022-05-20 | 35 | 11d |  |  | CONINCO | 40h | Bao gồm thời gian đợi phản hồi từ CĐT |
| 38 | 1.2 | BÁO CÁO NGHIÊN CỨU KHẢ THI - CONINCO | 33d | 2022-04-05 | 2022-05-24 |  | 9d |  |  | CONINCO | 264h |  |
| 39 | 1.3 | **CHỦ ĐẦU TƯ EUROWINDOW** | 8d | 2022-04-29 | 2022-05-12 |  | 17d |  |  | CĐT | 128h |  |
| 40 | 1.3.1 | Nhận báo cáo từ TV quản lý Điều phối, kiểm tra phê duyệt | 3d | 2022-04-29 | 2022-05-05 | 14 | 17d | 0d |  | CĐT | 24h |  |
| 41 | 1.3.2 | Phản hồi lần 1 | 5d | 2022-05-06 | 2022-05-12 | 40 | 17d |  |  | CĐT | 40h |  |
